# 3.7校园零食平台间接成本估算

Schedule from MS Project, 2019-02-25 to 2019-05-04, scheduled back from the finish, costs in ¥.

## Calendars

- “标准”的副本: Mon-Fri 08:00-12:00, 13:00-17:00; Sat-Sun off.

## Resources

| Resource | Rate |
| --- | --- |
| 项目经理 | 80 |
| 产品经理 | 50 |
| UI/UE设计师 | 50 |
| 软件架构师 | 50 |
| 测试主管 | 50 |
| 运营主管 | 50 |
| 项目经理 | 50 |
| 程序员1 | 30 |
| 程序员2 | 30 |
| 程序员3 | 30 |
| 测试人员1 | 30 |
| 测试人员2 | 30 |
| 程序员4 | 30 |
| 程序员5 | 30 |
| 程序员6 | 30 |
| 程序员7 | 30 |
| 程序员8 | 30 |
| 团队建设费 |  |
| 测试货物 | 30 |
| 间接成本 |  |
| 储备 |  |

## Schedule

| ID | WBS | Task | Duration | Start | Finish | Predecessors | Total slack | Free slack | Constraint | Resources | Work | Cost |
| --- | --- | --- | --- | --- | --- | --- | --- | --- | --- | --- | --- | --- |
| 1 | 1 | **启动** | 16d | 2019-02-25 | 2019-03-18 |  |  |  | as late as possible | 间接成本 [0.1%] | 96h | 8,000 |
| 2 | 1.1 | 任命项目经理 | 1d | 2019-02-25 | 2019-02-25 |  | 12d | 0d |  | 项目经理 | 8h | 640 |
| 3 | 1.2 | 组建核心团队 | 1d | 2019-02-26 | 2019-02-26 | 2 | 12d | 0d |  | UI/UE设计师; 测试主管; 产品经理; 软件架构师; 项目经理; 运营主管 | 48h | 2,640 |
| 4 | 1.3 | 干系人分析 | 1d | 2019-02-27 | 2019-02-27 | 3 | 12d | 0d |  | 产品经理; 项目经理; 运营主管 | 24h | 1,440 |
| 5 | 1.4 | 确定项目发起人 | 1d | 2019-02-28 | 2019-02-28 | 4 | 12d | 0d |  | 项目经理 | 8h | 640 |
| 6 | 1.5 | 制订章程 | 1d | 2019-02-28 | 2019-02-28 | 5FF | 12d |  |  | 项目经理 | 8h | 640 |
| 7 | 2 | **规划** | 22d | 2019-02-25 | 2019-03-26 |  | 0d |  | as late as possible | 储备 [0.1%]; 间接成本 [0.1%] | 240h | 20,770 |
| 8 | 2.1 | **规划范围** | 3d | 2019-02-25 | 2019-02-27 |  | 0d |  | as late as possible | 测试货物 | 48h | 3,150 |
| 9 | 2.1.1 | 制定需求说明书 | 1d | 2019-02-25 | 2019-02-25 |  | 17d | 0d |  | 项目经理; 软件架构师 | 16h | 1,040 |
| 10 | 2.1.2 | 页面设计 | 1d | 2019-02-25 | 2019-02-25 | 9FF | 49d |  |  | UI/UE设计师 | 8h | 400 |
| 11 | 2.1.3 | 范围说明书 | 1d | 2019-02-26 | 2019-02-26 | 9 | 17d | 0d |  | 项目经理; 产品经理 | 16h | 1,040 |
| 12 | 2.1.4 | 创建WBS | 1d | 2019-02-27 | 2019-02-27 | 11 | 17d | 0d |  | 项目经理 | 8h | 640 |
| 13 | 2.2 | **规划时间** | 5d | 2019-02-28 | 2019-03-06 |  | 0d |  | as late as possible |  | 40h | 3,200 |
| 14 | 2.2.1 | 排列工作包顺序 | 1d | 2019-02-28 | 2019-02-28 | 12 | 17d | 0d |  | 项目经理 | 8h | 640 |
| 15 | 2.2.2 | 估算资源 | 1d | 2019-03-01 | 2019-03-01 | 14 | 17d | 0d |  | 项目经理 | 8h | 640 |
| 16 | 2.2.3 | 估算持续时间 | 1d | 2019-03-04 | 2019-03-04 | 15 | 17d | 0d |  | 项目经理 | 8h | 640 |
| 17 | 2.2.4 | 制定进度计划 | 2d | 2019-03-05 | 2019-03-06 | 16 | 17d | 0d |  | 项目经理 | 16h | 1,280 |
| 18 | 2.3 | **规划成本** | 3d | 2019-03-07 | 2019-03-11 |  | 0d |  | as late as possible |  | 24h | 1,920 |
| 19 | 2.3.1 | 项目成本估算 | 1d | 2019-03-07 | 2019-03-07 | 17 | 0d |  | finish no later than 2019-04-04 | 项目经理 | 8h | 640 |
| 20 | 2.3.2 | 项目预算 | 2d | 2019-03-08 | 2019-03-11 | 19 | 17d | 0d |  | 项目经理 | 16h | 1,280 |
| 21 | 2.4 | **规划质量** | 3d | 2019-03-12 | 2019-03-14 |  | 0d |  | as late as possible |  | 40h | 1,680 |
| 22 | 2.4.1 | 制定测试计划 | 2d | 2019-03-12 | 2019-03-13 | 20 | 17d | 0d |  | 测试主管 | 16h | 800 |
| 23 | 2.4.2 | 设计测试用例 | 1d | 2019-03-14 | 2019-03-14 | 22 | 17d | 0d |  | 测试人员1; 测试人员2; 测试主管 | 24h | 880 |
| 24 | 2.5 | **规划人力资源** | 8d | 2019-03-15 | 2019-03-26 |  | 0d |  | as late as possible |  | 88h | 6,320 |
| 25 | 2.5.1 | 制定人力资源计划 | 2d | 2019-03-15 | 2019-03-18 | 23 | 17d | 0d |  | 项目经理 | 16h | 1,280 |
| 26 | 2.5.2 | 制定人力资源管理计划 | 2d | 2019-03-19 | 2019-03-20 | 25 | 17d | 0d |  | 项目经理 | 16h | 1,280 |

| ID | WBS | Task | Type | Duration | Start | Finish | Predecessors | Total slack | Free slack | Constraint | Resources | Work | Cost |
| --- | --- | --- | --- | --- | --- | --- | --- | --- | --- | --- | --- | --- | --- |
| 27 | 2.5.3 | **规划风险** |  | 3d | 2019-03-21 | 2019-03-25 |  | 0d |  | as late as possible |  | 48h | 3,120 |
| 28 | 2.5.3.1 | 预估风险 |  | 1d | 2019-03-21 | 2019-03-21 | 26 | 17d | 0d |  | 产品经理; 项目经理 | 16h | 1,040 |
| 29 | 2.5.3.2 | 制定风险应对策略 |  | 1d | 2019-03-22 | 2019-03-22 | 28 | 17d | 0d |  | 产品经理; 项目经理 | 16h | 1,040 |
| 30 | 2.5.3.3 | 制定风险登记册 |  | 1d | 2019-03-25 | 2019-03-25 | 29 | 17d | 0d |  | 产品经理; 项目经理 | 16h | 1,040 |
| 31 | 2.5.4 | 规划整合 |  | 1d | 2019-03-26 | 2019-03-26 | 30 | 17d | 0d |  | 项目经理 | 8h | 640 |
| 32 | 3 | **执行与监控** |  | 27d | 2019-03-27 | 2019-05-02 |  | 0d |  | as late as possible |  | 288h | 14,240 |
| 33 | 3.1 | 组建项目团队 |  | 1d | 2019-03-27 | 2019-03-27 | 31 | 17d | 0d |  | UI/UE设计师; 测试主管; 软件架构师; 项目经理 | 32h | 1,840 |
| 34 | 3.2 | **项目执行** |  | 3d | 2019-03-28 | 2019-04-01 |  | 0d |  | as late as possible |  | 80h | 2,400 |
| 35 | 3.2.1 | **用户模块** |  | 2d | 2019-03-28 | 2019-03-29 |  | 0d |  | as late as possible |  | 32h | 960 |
| 36 | 3.2.1.1 | 登录注册 |  | 1d | 2019-03-28 | 2019-03-28 | 33 | 25d | 0d |  | 程序员1 | 8h | 240 |
| 37 | 3.2.1.2 | 首页 |  | 1d | 2019-03-29 | 2019-03-29 | 36 | 25d | 0d |  | 程序员4 | 8h | 240 |
| 38 | 3.2.1.3 | 资讯 |  | 1d | 2019-03-29 | 2019-03-29 | 37SS | 25d | 0d |  | 程序员6 | 8h | 240 |
| 39 | 3.2.1.4 | 我的 |  | 1d | 2019-03-29 | 2019-03-29 | 38SS | 25d |  |  | 程序员7 | 8h | 240 |
| 40 | 3.2.2 | **商家模块** |  | 3d | 2019-03-28 | 2019-04-01 |  | 0d |  | as late as possible |  | 24h | 720 |
| 41 | 3.2.2.1 | 注册入驻 |  | 1d | 2019-03-28 | 2019-03-28 | 33 | 24d | 0d |  | 程序员8 | 8h | 240 |
| 42 | 3.2.2.2 | 商品管理 |  | 1d | 2019-03-29 | 2019-03-29 | 41 | 24d | 0d |  | 程序员5 | 8h | 240 |
| 43 | 3.2.2.3 | 订单处理 |  | 1d | 2019-04-01 | 2019-04-01 | 42 | 24d |  |  | 程序员3 | 8h | 240 |
| 44 | 3.2.3 | **管理员模块** |  | 3d | 2019-03-28 | 2019-04-01 |  | 0d |  | as late as possible |  | 24h | 720 |
| 45 | 3.2.3.1 | 商家审核 |  | 1d | 2019-03-28 | 2019-03-28 | 33 | 17d | 0d |  | 程序员2 | 8h | 240 |
| 46 | 3.2.3.2 | 统计分析 |  | 1d | 2019-03-29 | 2019-03-29 | 45 | 17d | 0d |  | 程序员3 | 8h | 240 |
| 47 | 3.2.3.3 | 备份 |  | 1d | 2019-04-01 | 2019-04-01 | 46 | 17d |  |  | 程序员4 | 8h | 240 |
| 48 | 3.3 | **项目监控** |  | 3d | 2019-04-27 | 2019-04-30 |  |  |  | as late as possible |  | 96h | 5,280 |
| 49 | 3.3.1 | 各项指标监控 |  | 1d | 2019-04-25 | 2019-04-25 | 47 | -2d | 0d |  | UI/UE设计师; 测试主管; 产品经理; 软件架构师; 项目经理; 运营主管 | 48h | 2,640 |
| 50 | 3.3.2 | 监控评审 |  | 1d | 2019-04-26 | 2019-04-26 | 49 | -2d | 0d |  | 产品经理; 项目经理 | 16h | 1,040 |
| 51 | 3.3.3 | 变更评审 | manual | 1d | 2019-04-29 | 2019-04-29 | 50 |  |  |  | 产品经理; 软件架构师 | 16h | 800 |
| 52 | 3.3.4 | 例会 | manual | 1d | 2019-04-30 | 2019-04-30 | 51 |  |  |  | 测试主管; 软件架构师 | 16h | 800 |

| ID | WBS | Task | Type | Duration | Start | Finish | Predecessors | Total slack | Free slack | Constraint | Resources | Work | Cost |
| --- | --- | --- | --- | --- | --- | --- | --- | --- | --- | --- | --- | --- | --- |
| 53 | 3.4 | **管理干系人** |  | 3d | 2019-04-30 | 2019-05-02 |  |  |  | as late as possible |  | 32h | 1,840 |
| 54 | 3.4.1 | 发布项目信息 | manual | 1d | 2019-04-30 | 2019-04-30 | 52 |  |  |  | 产品经理; 运营主管 | 16h | 800 |
| 55 | 3.4.2 | 报告监控指标 | manual | 1d | 2019-05-01 | 2019-05-01 | 54 |  |  |  | 运营主管 | 8h | 400 |
| 56 | 3.4.3 | 干系人沟通 | manual | 1d | 2019-05-02 | 2019-05-02 | 55 |  |  |  | 项目经理 | 8h | 640 |
| 57 | 3.5 | **团队建设** |  | 2d | 2019-04-22 | 2019-04-23 |  |  |  | as late as possible |  | 48h | 2,880 |
| 58 | 3.5.1 | 培训 |  | 1d | 2019-04-22 | 2019-04-22 | 33 | 12d | 0d | start no later than 2019-04-22 | 运营主管; 项目经理 | 16h | 1,040 |
| 59 | 3.5.2 | 娱乐 |  | 1d | 2019-04-23 | 2019-04-23 | 33 | 1d | 0d | start no later than 2019-04-23 | 软件架构师; UI/UE设计师 | 16h | 800 |
| 60 | 3.5.3 | 沟通 |  | 1d | 2019-04-23 | 2019-04-23 | 33 | 1d | 0d | finish no later than 2019-04-23 | 运营主管; 项目经理 | 16h | 1,040 |
| 61 | 4 | **收尾** |  | 2d | 2019-05-03 | 2019-05-04 |  |  |  | as late as possible |  | 32h | 1,840 |
| 62 | 4.1 | 项目最终验收 | manual | 1d | 2019-05-03 | 2019-05-03 | 56 |  |  |  | 项目经理; UI/UE设计师; 测试主管 | 24h | 1,440 |
| 63 | 4.2 | 项目内部收尾 | manual | 1d | 2019-05-04 | 2019-05-04 | 57 |  |  |  | 产品经理 | 8h | 400 |
